# Programa Obra

Schedule from MS Project, 2023-09-28 to 2024-07-21.
Casa

## Calendars

- Estándar: Mon-Fri 08:00-14:00, 15:00-17:00; Sat-Sun off. Exceptions (off unless hours are given): 2023-09-01 to 2025-09-01 08:00-14:00, 15:00-17:00.

## Resources

| Resource |
| --- |
| 1 |
| Ana |

## Schedule

| ID | WBS | Task | Duration | Start | Finish | Predecessors | Baseline start | Baseline finish | Baseline duration | Total slack | Free slack | Constraint |
| --- | --- | --- | --- | --- | --- | --- | --- | --- | --- | --- | --- | --- |
| 1 | 1 | **CASAS ABUELOS (7)** | 298d | 2023-09-28 | 2024-07-21 |  | 2007-10-01 | 2007-10-01 | 0d | 0d |  |  |
| 2 | 1.1 | **DISEÑOS, ESTUDIOS** | 46d | 2023-09-28 | 2023-11-12 |  |  |  |  | 0d |  |  |
| 3 | 1.1.1 | Topografia del sitio defintiva | 2d | 2023-09-28 | 2023-09-29 |  |  |  |  | 0d |  | must start on 2023-09-28 |
| 4 | 1.1.2 | Planos Arquitectonicos finales | 30d | 2023-09-30 | 2023-10-29 | 3 |  |  |  | 21d | 0d | start no earlier than 2023-09-26 |
| 5 | 1.1.3 | Concepto suelista | 7d | 2023-09-30 | 2023-10-06 | 3 |  |  |  | 23d |  |  |
| 6 | 1.1.4 | Planos estructurales finales | 7d | 2023-10-30 | 2023-11-05 | 4, 3, 5 |  |  |  | 21d | 0d |  |
| 7 | 1.1.5 | Diseños Instal Hidrosanit interno | 14d | 2023-10-23 | 2023-11-05 | 4FF+7d, 3 |  |  |  | 105d | 0d |  |
| 8 | 1.1.6 | Diseño General Agua Potable (Solutions) | 28d | 2023-09-30 | 2023-10-27 | 4SS, 3 |  |  |  | 52d | 0d |  |
| 9 | 1.1.7 | Diseños Instal Electricas interno | 21d | 2023-10-16 | 2023-11-05 | 4FF+7d |  |  |  | 77d | 0d |  |
| 10 | 1.1.8 | Diseños General Electrico | 35d | 2023-09-30 | 2023-11-03 | 4SS |  |  |  | 9d |  |  |
| 11 | 1.1.9 | Definir determinantes sistema gas | 3d | 2023-09-30 | 2023-10-02 | 4SS |  |  |  | 104d | 0d |  |
| 12 | 1.1.10 | Diseño sistema gas | 7d | 2023-10-03 | 2023-10-09 | 4SS, 11 |  |  |  | 104d | 41d |  |
| 13 | 1.1.11 | Entrega a obra Planos de Construccion | 2d | 2023-11-06 | 2023-11-07 | 6SS, 4, 7, 9 |  |  |  | 201d |  |  |
| 14 | 1.1.12 | Definir especificaciones acabados | 14d | 2023-10-23 | 2023-11-05 | 4FS-7d |  |  |  | 84d | 14d |  |
| 15 | 1.1.13 | Diseños finales puertas ventanas | 14d | 2023-10-30 | 2023-11-12 | 4 |  |  |  | 63d | 7d |  |
| 16 | 1.1.14 | Presupuesto de obra | 14d | 2023-10-30 | 2023-11-12 | 4 |  |  |  | 63d | 7d |  |
| 17 | 1.2 | **COTIZACIONES-CONTRATOS** | 49d | 2023-10-30 | 2023-12-17 |  |  |  |  | 14d |  |  |
| 18 | 1.2.1 | Pedido + pago materiales cimentacion | 14d | 2023-10-30 | 2023-11-12 | 4FF+7d, 6FF+7d |  |  |  | 28d | 0d | start no earlier than 2015-04-06 |
| 19 | 1.2.2 | Cotizar+Definir+Contrato platinas, uniones | 14d | 2023-11-06 | 2023-11-19 | 6FF, 18FS-7d |  |  |  | 56d | 0d | start no earlier than 2023-10-26 |
| 20 | 1.2.3 | Cotizar+Definir+Contrato Madera Buraglia (Entrepiso+Muros+cubierta) | 14d | 2023-11-06 | 2023-11-19 | 4, 6 |  |  |  | 35d | 0d | start no earlier than 2015-04-06 |
| 21 | 1.2.4 | Cotizar+Definir+Contrato Estructura + teja Cubierta | 14d | 2023-11-13 | 2023-11-26 | 19FS-7d, 20SS-7d |  |  |  | 63d | 0d |  |
| 22 | 1.2.5 | Cotizar+Definir+Contrato Carpinterias | 21d | 2023-11-20 | 2023-12-10 | 14, 19, 18, 15, 16 |  |  |  | 98d | 14d |  |
| 23 | 1.2.6 | Cotizar+Definir+Contrato Instalaciones Electricas-Hidrosanit | 21d | 2023-11-20 | 2023-12-10 | 7, 10, 11, 8, 9, 12, 21SS+7d |  |  |  | 63d | 0d |  |
| 24 | 1.2.7 | Cotizar+Definir+Contrato+Suministro ceramicas, mesones, aparatos sanit | 21d | 2023-11-27 | 2023-12-17 | 4, 23SS+7d, 14 |  |  |  | 63d | 0d |  |

| ID | WBS | Task | Duration | Start | Finish | Predecessors | Total slack | Free slack | Constraint |
| --- | --- | --- | --- | --- | --- | --- | --- | --- | --- |
| 25 | 1.3 | **LOGISTICA TRANSPORTE MATERIALES** | 91d | 2023-10-23 | 2024-01-21 |  | 28d |  |  |
| 26 | 1.3.1 | **LOGISTICA CIUDADES** | 91d | 2023-10-23 | 2024-01-21 |  | 28d |  |  |
| 27 | 1.3.1.1 | arriendo Bodega Cartagena Chaira | 21d | 2023-10-23 | 2023-11-12 | 3, 18FF | 175d | 56d | start no earlier than 2015-04-06 |
| 28 | 1.3.1.2 | Transporte materiales cimentacion | 14d | 2023-11-13 | 2023-11-26 | 4, 18 | 28d | 0d |  |
| 29 | 1.3.1.3 | Corte + Transporte madera amazonica | 28d | 2023-11-06 | 2023-12-03 |  | 28d | 0d | start no earlier than 2023-11-06 |
| 30 | 1.3.1.4 | Prepracion madera Buraglia en Armenia | 21d | 2023-11-20 | 2023-12-10 | 20 | 21d | 0d |  |
| 31 | 1.3.1.5 | Transporte madera Buraglia (estructuras+muros+pisos) | 14d | 2023-12-11 | 2023-12-24 | 4, 18, 19, 20, 30 | 21d | 0d |  |
| 32 | 1.3.1.6 | Transporte materiales cubierta | 14d | 2023-11-27 | 2023-12-10 | 21 | 56d | 35d |  |
| 33 | 1.3.1.7 | Transporte materiales piso acabado+ceramicas | 21d | 2023-12-18 | 2024-01-07 | 4, 6, 24 | 84d | 0d | start no earlier than 2015-04-06 |
| 34 | 1.3.1.8 | Transporte materiales Instalaciones Electricas-Hidrosanit | 14d | 2023-12-11 | 2023-12-24 | 4, 18, 23 | 63d | 0d |  |
| 35 | 1.3.1.9 | Transporte materiales carpinterias | 14d | 2023-12-25 | 2024-01-07 | 4, 18, 34, 22 | 63d | 0d |  |
| 36 | 1.3.1.10 | Transporte materiales aparatos-mesones | 14d | 2024-01-08 | 2024-01-21 | 4, 18, 35, 24 | 133d | 42d |  |
| 37 | 1.3.1.11 | Transporte Pluvial Cartagena Resguardo | 7d | 2023-12-25 | 2023-12-31 | 31 | 21d | 0d |  |
| 38 | 1.4 | **EJECUCION OBRA** | 266d | 2023-10-30 | 2024-07-21 |  | 0d |  |  |
| 39 | 1.4.1 | **COIREDD** | 133d | 2023-10-30 | 2024-03-10 |  | 28d |  |  |
| 40 | 1.4.1.1 | Preliminares | 7d | 2023-10-30 | 2023-11-05 | 4 | 42d | 7d |  |
| 41 | 1.4.1.2 | Cimentacion | 14d | 2023-11-13 | 2023-11-26 | 3, 40 | 35d | 7d | start no earlier than 2023-11-13 |
| 42 | 1.4.1.3 | Estructura Entrepiso Piso 1 | 21d | 2023-12-04 | 2023-12-24 | 41, 29 | 28d | 7d |  |
| 43 | 1.4.1.4 | Muros Piso 1 | 14d | 2024-01-01 | 2024-01-14 | 42, 37 | 21d | 0d |  |
| 44 | 1.4.1.5 | Estructura + Teja Cubierta | 21d | 2024-01-15 | 2024-02-04 | 43, 32 | 21d | 0d |  |
| 45 | 1.4.1.6 | Piso madera acabado | 14d | 2024-02-05 | 2024-02-18 | 44, 37 | 98d | 0d |  |
| 46 | 1.4.1.7 | Ceramicas-Pinturas | 7d | 2024-02-19 | 2024-02-25 | 45 | 98d | 0d |  |
| 47 | 1.4.1.8 | Carpinterias Elaboracion | 35d | 2024-01-08 | 2024-02-11 | 35 | 63d | 0d |  |
| 48 | 1.4.1.9 | Carpinterias Instalacion | 7d | 2024-02-26 | 2024-03-03 | 46, 47 | 98d | 0d |  |
| 49 | 1.4.1.10 | Instalac Electricas Internas | 7d | 2024-02-05 | 2024-02-11 | 44, 34 | 119d | 21d |  |
| 50 | 1.4.1.11 | Instalac Internas Hidrosanit | 7d | 2024-02-05 | 2024-02-11 | 44 | 119d | 21d |  |
| 51 | 1.4.1.12 | Aparatos sanit-mesones | 7d | 2024-03-04 | 2024-03-10 | 50, 48, 36 | 98d | 0d |  |
| 52 | 1.4.1.13 | Entrega Final | 7d | 2024-03-04 | 2024-03-10 | 48, 51SS | 98d |  |  |

| ID | WBS | Task | Duration | Start | Finish | Predecessors | Total slack | Free slack | Constraint |
| --- | --- | --- | --- | --- | --- | --- | --- | --- | --- |
| 53 | 1.4.2 | **CASA ABUELO 1 CAÑO NEGRO** | 133d | 2023-11-27 | 2024-04-07 |  | 28d |  |  |
| 54 | 1.4.2.1 | Preliminares | 7d | 2023-11-27 | 2023-12-03 | 28, 40 | 28d | 0d |  |
| 55 | 1.4.2.2 | Cimentacion | 14d | 2023-12-04 | 2023-12-17 | 54, 3, 41 | 28d | 21d | start no earlier than 2015-03-23 |
| 56 | 1.4.2.3 | Estructura Entrepiso Piso 1 | 14d | 2024-01-08 | 2024-01-21 | 55 | 42d | 0d | start no earlier than 2024-01-08 |
| 57 | 1.4.2.4 | Muros Piso 1 | 7d | 2024-01-22 | 2024-01-28 | 56 | 42d | 0d |  |
| 58 | 1.4.2.5 | Estructura Entrepiso Piso 2 | 14d | 2024-01-29 | 2024-02-11 | 57, 31, 28 | 42d | 0d |  |
| 59 | 1.4.2.6 | Muros Piso 2 | 7d | 2024-02-12 | 2024-02-18 | 58, 19 | 42d | 0d |  |
| 60 | 1.4.2.7 | Estructura + Teja Cubierta | 14d | 2024-02-19 | 2024-03-03 | 59, 44 | 42d | 0d |  |
| 61 | 1.4.2.8 | Piso madera acabado (1+2) | 14d | 2024-03-04 | 2024-03-17 | 60 | 70d | 0d |  |
| 62 | 1.4.2.9 | Ceramicas-Pinturas | 7d | 2024-03-18 | 2024-03-24 | 61 | 70d | 0d |  |
| 63 | 1.4.2.10 | Carpinterias Elaboracion | 35d | 2024-01-29 | 2024-03-03 | 35, 47SS+21d | 63d | 0d |  |
| 64 | 1.4.2.11 | Carpinterias Instalacion | 7d | 2024-03-25 | 2024-03-31 | 62, 63 | 70d | 0d |  |
| 65 | 1.4.2.12 | Instalac Electricas Internas | 7d | 2024-03-04 | 2024-03-10 | 60, 34, 49 | 98d |  |  |
| 66 | 1.4.2.13 | Instalac Internas Hidrosanit | 7d | 2024-03-04 | 2024-03-10 | 60 | 91d | 21d |  |
| 67 | 1.4.2.14 | Aparatos sanit-mesones | 7d | 2024-04-01 | 2024-04-07 | 64, 66, 36 | 70d | 0d |  |
| 68 | 1.4.2.15 | Entrega Final | 7d | 2024-04-01 | 2024-04-07 | 64, 67SS | 70d |  |  |
| 69 | 1.4.3 | **CASA ABUELO 2 TIRIVITA** | 154d | 2023-12-04 | 2024-05-05 |  | 35d |  |  |
| 70 | 1.4.3.1 | Preliminares | 7d | 2023-12-04 | 2023-12-10 | 28, 40, 54 | 35d |  |  |
| 71 | 1.4.3.2 | Cimentacion | 14d | 2024-01-15 | 2024-01-28 | 70, 3, 41, 55 | 0d |  | start no earlier than 2024-01-15 |
| 72 | 1.4.3.3 | Estructura Entrepiso Piso 1 | 14d | 2024-01-29 | 2024-02-11 | 71 | 7d | 0d |  |
| 73 | 1.4.3.4 | Muros Piso 1 | 7d | 2024-02-12 | 2024-02-18 | 72 | 7d | 0d |  |
| 74 | 1.4.3.5 | Estructura Entrepiso Piso 2 | 14d | 2024-02-19 | 2024-03-03 | 73, 31, 28 | 7d | 0d |  |
| 75 | 1.4.3.6 | Muros Piso 2 | 7d | 2024-03-04 | 2024-03-10 | 74, 19 | 7d | 0d |  |
| 76 | 1.4.3.7 | Estructura + Teja Cubierta | 14d | 2024-03-11 | 2024-03-24 | 75, 44 | 7d | 0d |  |
| 77 | 1.4.3.8 | Piso madera acabado (1+2) | 14d | 2024-03-25 | 2024-04-07 | 76 | 42d | 0d |  |
| 78 | 1.4.3.9 | Ceramicas-Pinturas | 7d | 2024-04-08 | 2024-04-14 | 77 | 42d | 0d |  |
| 79 | 1.4.3.10 | Carpinterias Elaboracion | 35d | 2024-02-19 | 2024-03-24 | 35, 63SS+21d | 63d | 21d |  |
| 80 | 1.4.3.11 | Carpinterias Instalacion | 7d | 2024-04-15 | 2024-04-21 | 78, 79, 63 | 42d | 0d |  |
| 81 | 1.4.3.12 | Instalac Electricas Internas | 7d | 2024-03-25 | 2024-03-31 | 76, 34, 49 | 77d |  |  |
| 82 | 1.4.3.13 | Instalac Internas Hidrosanit | 7d | 2024-03-25 | 2024-03-31 | 76 | 63d | 21d |  |
| 83 | 1.4.3.14 | Aparatos sanit-mesones | 7d | 2024-04-22 | 2024-04-28 | 80, 82, 36 | 42d | 0d |  |
| 84 | 1.4.3.15 | Entrega Final | 7d | 2024-04-29 | 2024-05-05 | 80, 83 | 42d |  |  |

| ID | WBS | Task | Duration | Start | Finish | Predecessors | Total slack | Free slack | Constraint |
| --- | --- | --- | --- | --- | --- | --- | --- | --- | --- |
| 85 | 1.4.4 | **CASA ABUELO 3 PUERTO ARTURO** | 119d | 2024-01-22 | 2024-05-19 |  | 0d |  |  |
| 86 | 1.4.4.1 | Preliminares | 7d | 2024-01-22 | 2024-01-28 | 28, 40, 54 | 0d |  | start no earlier than 2024-01-22 |
| 87 | 1.4.4.2 | Cimentacion | 14d | 2024-01-29 | 2024-02-11 | 86, 3, 41, 55, 71 | 0d |  | start no earlier than 2024-01-15 |
| 88 | 1.4.4.3 | Estructura Entrepiso Piso 1 | 14d | 2024-02-12 | 2024-02-25 | 87, 44 | 0d |  |  |
| 89 | 1.4.4.4 | Muros Piso 1 | 7d | 2024-02-26 | 2024-03-03 | 88 | 0d |  |  |
| 90 | 1.4.4.5 | Estructura Entrepiso Piso 2 | 14d | 2024-03-04 | 2024-03-17 | 89, 31, 28 | 0d |  |  |
| 91 | 1.4.4.6 | Muros Piso 2 | 7d | 2024-03-18 | 2024-03-24 | 90, 19 | 0d |  |  |
| 92 | 1.4.4.7 | Estructura + Teja Cubierta | 14d | 2024-03-25 | 2024-04-07 | 91, 44 | 0d |  |  |
| 93 | 1.4.4.8 | Piso madera acabado (1+2) | 14d | 2024-04-08 | 2024-04-21 | 92 | 28d | 0d |  |
| 94 | 1.4.4.9 | Ceramicas-Pinturas | 7d | 2024-04-22 | 2024-04-28 | 93 | 28d | 0d |  |
| 95 | 1.4.4.10 | Carpinterias Elaboracion | 35d | 2024-02-19 | 2024-03-24 | 35, 63SS+21d | 63d | 35d |  |
| 96 | 1.4.4.11 | Carpinterias Instalacion | 7d | 2024-04-29 | 2024-05-05 | 94, 95, 63 | 28d | 0d |  |
| 97 | 1.4.4.12 | Instalac Electricas Internas | 7d | 2024-04-08 | 2024-04-14 | 92, 34, 49 | 63d |  |  |
| 98 | 1.4.4.13 | Instalac Internas Hidrosanit | 7d | 2024-04-08 | 2024-04-14 | 92 | 49d | 21d |  |
| 99 | 1.4.4.14 | Aparatos sanit-mesones | 7d | 2024-05-06 | 2024-05-12 | 96, 98, 36 | 28d | 0d |  |
| 100 | 1.4.4.15 | Entrega Final | 7d | 2024-05-13 | 2024-05-19 | 96, 99 | 28d |  |  |
| 101 | 1.4.5 | **CASA ABUELO 4 SAINI** | 133d | 2024-01-29 | 2024-06-09 |  | 14d |  |  |
| 102 | 1.4.5.1 | Preliminares | 7d | 2024-01-29 | 2024-02-04 | 28, 40, 54, 86 | 7d | 0d | start no earlier than 2024-01-22 |
| 103 | 1.4.5.2 | Cimentacion | 14d | 2024-02-12 | 2024-02-25 | 102, 55, 87 | 7d | 0d | start no earlier than 2024-01-15 |
| 104 | 1.4.5.3 | Estructura Entrepiso Piso 1 | 14d | 2024-03-04 | 2024-03-17 | 103, 44, 60 | 42d | 0d |  |
| 105 | 1.4.5.4 | Muros Piso 1 | 7d | 2024-03-18 | 2024-03-24 | 104 | 42d | 0d |  |
| 106 | 1.4.5.5 | Estructura Entrepiso Piso 2 | 14d | 2024-03-25 | 2024-04-07 | 105, 31, 28 | 42d | 0d |  |
| 107 | 1.4.5.6 | Muros Piso 2 | 7d | 2024-04-08 | 2024-04-14 | 106, 19 | 42d | 0d |  |
| 108 | 1.4.5.7 | Estructura + Teja Cubierta | 14d | 2024-04-15 | 2024-04-28 | 107, 44 | 42d | 0d |  |
| 109 | 1.4.5.8 | Piso madera acabado (1+2) | 14d | 2024-04-29 | 2024-05-12 | 108 | 28d | 0d |  |
| 110 | 1.4.5.9 | Ceramicas-Pinturas | 7d | 2024-05-13 | 2024-05-19 | 109 | 28d | 0d |  |
| 111 | 1.4.5.10 | Carpinterias Elaboracion | 35d | 2024-02-19 | 2024-03-24 | 35, 63SS+21d | 84d | 56d |  |
| 112 | 1.4.5.11 | Carpinterias Instalacion | 7d | 2024-05-20 | 2024-05-26 | 110, 111, 63 | 28d | 0d |  |
| 113 | 1.4.5.12 | Instalac Electricas Internas | 7d | 2024-04-29 | 2024-05-05 | 108, 34, 49 | 63d |  |  |
| 114 | 1.4.5.13 | Instalac Internas Hidrosanit | 7d | 2024-04-29 | 2024-05-05 | 108 | 49d | 21d |  |
| 115 | 1.4.5.14 | Aparatos sanit-mesones | 7d | 2024-05-27 | 2024-06-02 | 112, 114, 36 | 28d | 0d |  |
| 116 | 1.4.5.15 | Entrega Final | 7d | 2024-06-03 | 2024-06-09 | 112, 115 | 28d |  |  |

| ID | WBS | Task | Duration | Start | Finish | Predecessors | Total slack | Free slack | Constraint |
| --- | --- | --- | --- | --- | --- | --- | --- | --- | --- |
| 117 | 1.4.6 | **CASA ABUELO 5 PAIBELLE** | 133d | 2024-02-05 | 2024-06-16 |  | 21d |  |  |
| 118 | 1.4.6.1 | Preliminares | 7d | 2024-02-05 | 2024-02-11 | 28, 40, 54, 102 | 21d | 0d | start no earlier than 2024-01-22 |
| 119 | 1.4.6.2 | Cimentacion | 14d | 2024-02-26 | 2024-03-10 | 118, 103 | 7d | 0d | start no earlier than 2024-01-15 |
| 120 | 1.4.6.3 | Estructura Entrepiso Piso 1 | 14d | 2024-03-11 | 2024-03-24 | 119, 60 | 21d | 0d |  |
| 121 | 1.4.6.4 | Muros Piso 1 | 7d | 2024-03-25 | 2024-03-31 | 120 | 21d | 0d |  |
| 122 | 1.4.6.5 | Estructura Entrepiso Piso 2 | 14d | 2024-04-01 | 2024-04-14 | 121, 31, 28 | 21d | 0d |  |
| 123 | 1.4.6.6 | Muros Piso 2 | 7d | 2024-04-15 | 2024-04-21 | 122, 19 | 21d | 0d |  |
| 124 | 1.4.6.7 | Estructura + Teja Cubierta | 14d | 2024-04-22 | 2024-05-05 | 123, 44 | 21d | 0d |  |
| 125 | 1.4.6.8 | Piso madera acabado (1+2) | 14d | 2024-05-06 | 2024-05-19 | 124 | 21d | 0d |  |
| 126 | 1.4.6.9 | Ceramicas-Pinturas | 7d | 2024-05-20 | 2024-05-26 | 125 | 21d | 0d |  |
| 127 | 1.4.6.10 | Carpinterias Elaboracion | 35d | 2024-02-19 | 2024-03-24 | 35, 63SS+21d | 84d | 63d |  |
| 128 | 1.4.6.11 | Carpinterias Instalacion | 7d | 2024-05-27 | 2024-06-02 | 126, 127, 63 | 21d | 0d |  |
| 129 | 1.4.6.12 | Instalac Electricas Internas | 7d | 2024-05-06 | 2024-05-12 | 124, 34, 49 | 56d |  |  |
| 130 | 1.4.6.13 | Instalac Internas Hidrosanit | 7d | 2024-05-06 | 2024-05-12 | 124 | 42d | 21d |  |
| 131 | 1.4.6.14 | Aparatos sanit-mesones | 7d | 2024-06-03 | 2024-06-09 | 128, 130, 36 | 21d | 0d |  |
| 132 | 1.4.6.15 | Entrega Final | 7d | 2024-06-10 | 2024-06-16 | 128, 131 | 21d |  |  |
| 133 | 1.4.7 | **CASA ABUELO 6 PISTA** | 154d | 2024-02-12 | 2024-07-14 |  | 7d |  |  |
| 134 | 1.4.7.1 | Preliminares | 7d | 2024-02-12 | 2024-02-18 | 28, 54, 118 | 21d | 0d | start no earlier than 2024-01-22 |
| 135 | 1.4.7.2 | Cimentacion | 14d | 2024-03-11 | 2024-03-24 | 134, 119 | 7d | 0d | start no earlier than 2024-01-15 |
| 136 | 1.4.7.3 | Estructura Entrepiso Piso 1 | 14d | 2024-04-08 | 2024-04-21 | 135, 76FS+14d | 7d | 0d |  |
| 137 | 1.4.7.4 | Muros Piso 1 | 7d | 2024-04-22 | 2024-04-28 | 136 | 7d | 0d |  |
| 138 | 1.4.7.5 | Estructura Entrepiso Piso 2 | 14d | 2024-04-29 | 2024-05-12 | 137, 31, 28 | 7d | 0d |  |
| 139 | 1.4.7.6 | Muros Piso 2 | 7d | 2024-05-13 | 2024-05-19 | 138, 19 | 7d | 0d |  |
| 140 | 1.4.7.7 | Estructura + Teja Cubierta | 14d | 2024-05-20 | 2024-06-02 | 139, 44 | 7d | 0d |  |
| 141 | 1.4.7.8 | Piso madera acabado (1+2) | 14d | 2024-06-03 | 2024-06-16 | 140 | 7d | 0d |  |
| 142 | 1.4.7.9 | Ceramicas-Pinturas | 7d | 2024-06-17 | 2024-06-23 | 141 | 7d | 0d |  |
| 143 | 1.4.7.10 | Carpinterias Elaboracion | 35d | 2024-02-19 | 2024-03-24 | 35, 63SS+21d | 91d |  |  |
| 144 | 1.4.7.11 | Carpinterias Instalacion | 7d | 2024-06-24 | 2024-06-30 | 142, 143, 63 | 7d | 0d |  |
| 145 | 1.4.7.12 | Instalac Electricas Internas | 7d | 2024-06-03 | 2024-06-09 | 140, 34, 49 | 42d |  |  |
| 146 | 1.4.7.13 | Instalac Internas Hidrosanit | 7d | 2024-06-03 | 2024-06-09 | 140 | 28d | 21d |  |
| 147 | 1.4.7.14 | Aparatos sanit-mesones | 7d | 2024-07-01 | 2024-07-07 | 144, 146, 36 | 7d | 0d |  |
| 148 | 1.4.7.15 | Entrega Final | 7d | 2024-07-08 | 2024-07-14 | 144, 147 | 7d |  |  |

| ID | WBS | Task | Duration | Start | Finish | Predecessors | Total slack | Free slack | Constraint |
| --- | --- | --- | --- | --- | --- | --- | --- | --- | --- |
| 149 | 1.4.8 | **CASA ABUELO 7 CHORROS** | 154d | 2024-02-19 | 2024-07-21 |  | 0d |  |  |
| 150 | 1.4.8.1 | Preliminares | 7d | 2024-02-19 | 2024-02-25 | 28, 54, 134 | 28d | 0d | start no earlier than 2024-01-22 |
| 151 | 1.4.8.2 | Cimentacion | 14d | 2024-03-25 | 2024-04-07 | 150, 135 | 7d |  | start no earlier than 2024-01-15 |
| 152 | 1.4.8.3 | Estructura Entrepiso Piso 1 | 14d | 2024-04-15 | 2024-04-28 | 151, 92FS+7d | 0d |  |  |
| 153 | 1.4.8.4 | Muros Piso 1 | 7d | 2024-04-29 | 2024-05-05 | 152 | 0d |  |  |
| 154 | 1.4.8.5 | Estructura Entrepiso Piso 2 | 14d | 2024-05-06 | 2024-05-19 | 153, 31, 28 | 0d |  |  |
| 155 | 1.4.8.6 | Muros Piso 2 | 7d | 2024-05-20 | 2024-05-26 | 154, 19 | 0d |  |  |
| 156 | 1.4.8.7 | Estructura + Teja Cubierta | 14d | 2024-05-27 | 2024-06-09 | 155, 44 | 0d |  |  |
| 157 | 1.4.8.8 | Piso madera acabado (1+2) | 14d | 2024-06-10 | 2024-06-23 | 156 | 0d |  |  |
| 158 | 1.4.8.9 | Ceramicas-Pinturas | 7d | 2024-06-24 | 2024-06-30 | 157 | 0d |  |  |
| 159 | 1.4.8.10 | Carpinterias Elaboracion | 35d | 2024-02-19 | 2024-03-24 | 35, 63SS+21d | 91d |  |  |
| 160 | 1.4.8.11 | Carpinterias Instalacion | 7d | 2024-07-01 | 2024-07-07 | 158, 159, 63 | 0d |  |  |
| 161 | 1.4.8.12 | Instalac Electricas Internas | 7d | 2024-06-10 | 2024-06-16 | 156, 34, 49 | 35d |  |  |
| 162 | 1.4.8.13 | Instalac Internas Hidrosanit | 7d | 2024-06-10 | 2024-06-16 | 156 | 21d |  |  |
| 163 | 1.4.8.14 | Aparatos sanit-mesones | 7d | 2024-07-08 | 2024-07-14 | 160, 162, 36 | 0d |  |  |
| 164 | 1.4.8.15 | Entrega Final | 7d | 2024-07-15 | 2024-07-21 | 160, 163 | 0d |  |  |
| 165 | 2 | **URBANISMO + SERVICIOS** | 233d | 2023-10-28 | 2024-06-16 |  | 35d |  |  |
| 166 | 2.1 | **AGUA POTABLE** | 205d | 2023-10-28 | 2024-05-19 |  | 63d |  |  |
| 167 | 2.1.1 | Cotizar+Definir+Contrato Construccion sistema agua | 14d | 2023-10-28 | 2023-11-10 | 8 | 101d | 0d |  |
| 168 | 2.1.2 | Suministro equipos | 56d | 2023-11-11 | 2024-01-05 | 167 | 149d | 107d |  |
| 169 | 2.1.3 | Obra Civil Tanques agua | 28d | 2024-02-26 | 2024-03-24 | 167, 40, 54, 70, 86, 102, 118, 134, 150 | 28d | 0d |  |
| 170 | 2.1.4 | Tuberia acometida hasta COI Redd | 28d | 2024-03-25 | 2024-04-21 | 169 | 42d | 0d |  |
| 171 | 2.1.5 | Impermeabilizacion y acabados tanque | 28d | 2024-04-08 | 2024-05-05 | 170FS-14d, 169 | 70d |  |  |
| 172 | 2.1.6 | Instalacion Bombas, equipos | 14d | 2024-04-22 | 2024-05-05 | 170, 169, 168 | 42d | 0d |  |
| 173 | 2.1.7 | Pruebas finales y llenado | 14d | 2024-05-06 | 2024-05-19 | 172 | 42d | 14d |  |

| ID | WBS | Task | Duration | Start | Finish | Predecessors | Total slack | Free slack |
| --- | --- | --- | --- | --- | --- | --- | --- | --- |
| 174 | 2.2 | **ENERGIA** | 205d | 2023-11-11 | 2024-06-02 | 167 | 35d |  |
| 175 | 2.2.1 | Cotizar+Definir+Contrato Construccion sistema ENERGIA | 14d | 2023-11-11 | 2023-11-24 | 8 | 101d | 0d |
| 176 | 2.2.2 | Suministro equipos | 90d | 2023-11-25 | 2024-02-22 | 175 | 101d | 73d |
| 177 | 2.2.3 | Obra Civil | 14d | 2024-03-25 | 2024-04-07 | 175, 40, 169, 54, 70, 86, 102, 118, 134, 150 | 28d | 0d |
| 178 | 2.2.4 | Tuberia acometida hasta COI Redd | 28d | 2024-04-08 | 2024-05-05 | 177 | 28d | 0d |
| 179 | 2.2.5 | Instalacion Bombas, equipos | 14d | 2024-05-06 | 2024-05-19 | 176, 177, 178 | 28d | 0d |
| 180 | 2.2.6 | Pruebas finales Y CONEXIÓN | 14d | 2024-05-20 | 2024-06-02 | 179 | 28d | 0d |
| 181 | 2.3 | **SANITARIO** | 233d | 2023-10-28 | 2024-06-16 |  | 35d |  |
| 182 | 2.3.1 | Cotizar+Definir+Contrato Construccion sistema SANITARIO | 14d | 2023-10-28 | 2023-11-10 | 8 | 163d | 51d |
| 183 | 2.3.2 | Suministro equipos | 28d | 2024-01-08 | 2024-02-04 | 167, 182FS+7d, 20, 33, 27, 175 | 112d | 77d |
| 184 | 2.3.3 | Obra Civil | 14d | 2024-04-08 | 2024-04-21 | 15, 16, 177 | 35d | 0d |
| 185 | 2.3.4 | Tuberia campo infiltracion | 14d | 2024-04-22 | 2024-05-05 | 184, 183 | 35d | 0d |
| 186 | 2.3.5 | Instalacion Tanque septico, equipos | 14d | 2024-04-22 | 2024-05-05 | 185FF | 35d | 0d |
| 187 | 2.3.6 | Pruebas finales Y CONEXIÓN | 28d | 2024-05-06 | 2024-06-02 | 182, 186 | 35d | 7d |
| 188 | 2.3.7 | Aseo y Entrega | 14d | 2024-06-03 | 2024-06-16 | 187FS-7d, 185SS, 186, 180, 173 | 28d |  |
